# caB2BIterationWiseMPP

Schedule from MS Project, 2007-02-16 to 2007-06-25, A marks actual dates.
Persistent Systems Pvt. Ltd.

## Calendars

- Standard: Mon-Fri 08:00-12:00, 13:00-17:00; Sat-Sun off.

## Resources

| Resource |
| --- |
| Chandrakant |
| Srinath |
| Chetan |
| Mahesh |
| Pratibha |
| Deepak |
| All |
| Sayali |
| Hrishikesh |
| Sreekanth |
| caTissue Team |
| café Team |
| Rahul |

## Schedule

| ID | WBS | Task | Type | Duration | Start | Finish | Predecessors | Complete | Remaining | Baseline start | Baseline finish | Baseline duration | Total slack | Constraint | Resources | Work | Actual work |
| --- | --- | --- | --- | --- | --- | --- | --- | --- | --- | --- | --- | --- | --- | --- | --- | --- | --- |
| 1 | 1 | February iteration release | milestone | 0d | 2007-03-02 A | 2007-03-02 A |  | 100% |  | 2007-03-02 | 2007-03-02 | 0d |  | start no earlier than 2007-02-28 |  |  |  |
| 2 | 2 | **Mar Iteration** |  | 37d | 2007-02-16 A | 2007-04-09 |  | 75% | 9.1d | 2007-03-02 | 2007-04-05 | 25d | 55d |  |  | 1040h | 800h |
| 3 | 2.1 | Custom display names for meta data categories |  | 2d | 2007-03-02 A | 2007-03-05 A | 1 | 100% |  |  |  |  |  |  | Chandrakant; Deepak | 32h | 32h |
| 4 | 2.2 | **Inheritance** |  | 14d | 2007-03-06 A | 2007-03-23 A |  | 100% |  | 2007-03-02 | 2007-03-14 | 9d |  |  |  | 168h | 168h |
| 5 | 2.2.1 | Path interpretation |  | 7d | 2007-03-06 A | 2007-03-14 A | 3 | 100% |  | 2007-03-02 | 2007-03-08 | 5d |  |  | Chandrakant; Srinath | 112h | 112h |
| 6 | 2.2.2 | Performance Improvement |  | 5d | 2007-03-15 A | 2007-03-21 A | 5 | 100% |  |  |  |  |  |  | Srinath | 40h | 40h |
| 7 | 2.2.3 | Query module testing |  | 2d | 2007-03-22 A | 2007-03-23 A | 6 | 100% |  | 2007-03-13 | 2007-03-14 | 2d |  |  | Srinath | 16h | 16h |
| 8 | 2.3 | **Storing curated paths** |  | 14d | 2007-03-15 A | 2007-04-03 A |  | 100% |  | 2007-03-09 | 2007-03-16 | 6d |  |  |  | 96h | 96h |
| 9 | 2.3.1 | Backend |  | 10d | 2007-03-15 A | 2007-03-28 A | 5 | 100% |  | 2007-03-09 | 2007-03-14 | 4d |  | finish no earlier than 2007-03-30 | Chandrakant | 80h | 80h |
| 10 | 2.3.2 | Ambiguity Resolver UI change |  | 2d | 2007-04-02 A | 2007-04-03 A | 9 | 100% |  | 2007-03-15 | 2007-03-16 | 2d |  |  | Deepak | 16h | 16h |
| 11 | 2.4 | **Enhancements to metadata search** |  | 17d | 2007-03-05 A | 2007-03-27 A |  | 100% |  | 2007-03-02 | 2007-03-12 | 7d |  |  |  | 96h | 96h |
| 12 | 2.4.1 | Backend implementation |  | 10d | 2007-03-05 A | 2007-03-16 A | 1 | 100% |  | 2007-03-02 | 2007-03-08 | 5d |  |  | Hrishikesh | 80h | 80h |
| 13 | 2.4.2 | User Interface |  | 2d | 2007-03-26 A | 2007-03-27 A | 12 | 100% |  | 2007-03-09 | 2007-03-12 | 2d |  |  | Deepak | 16h | 16h |
| 14 | 2.5 | **Create Experiment** |  | 25d | 2007-03-02 A | 2007-04-05 A |  | 100% |  | 2007-03-02 | 2007-03-19 | 12d |  |  |  | 224h | 224h |
| 15 | 2.5.1 | Backend support for saving newly created experiment |  | 22d | 2007-03-05 A | 2007-04-03 A | 1 | 100% |  | 2007-03-02 | 2007-03-15 | 10d |  | finish no earlier than 2007-04-03 | Chetan | 176h | 176h |
| 16 | 2.5.2 | UI wizard to create new experiment |  | 2d | 2007-03-02 A | 2007-03-05 A | 1 | 100% |  | 2007-03-02 | 2007-03-05 | 2d |  |  | Deepak | 16h | 16h |
| 17 | 2.5.3 | Integrate UI with backend APIs |  | 2d | 2007-04-04 A | 2007-04-05 A | 15 | 100% |  | 2007-03-16 | 2007-03-19 | 2d |  |  | Deepak; Chetan | 32h | 32h |
| 18 | 2.6 | DAG-Connect All functionality |  | 7d | 2007-03-22 A | 2007-03-30 A | 1 | 100% |  | 2007-03-02 | 2007-03-12 | 7d |  |  | Pratibha | 56h | 56h |
| 19 | 2.7 | **Bugzilla Fixes** |  | 3d | 2007-02-16 A | 2007-02-20 A |  | 100% |  |  |  |  |  |  |  |  |  |
| 20 | 2.7.1 | Firing multiple queries for apply all in separate threads for performance boost. |  | 3d | 2007-02-16 A | 2007-02-20 A |  | 100% |  |  |  |  |  |  |  |  |  |
| 21 | 2.8 | Fixing UI issues |  | 10d | 2007-03-08 A | 2007-03-21 A | 31 | 100% |  | 2007-03-08 | 2007-03-21 | 10d |  |  | Deepak | 80h | 80h |
| 22 | 2.9 | Testing and bug fixes |  | 5d | 2007-04-02 A | 2007-04-06 A | 18 | 100% |  | 2007-03-29 | 2007-04-04 | 5d |  |  | All | 40h | 40h |
| 23 | 2.10 | Release notes |  | 1d | 2007-04-09 A | 2007-04-09 A | 22 | 100% |  | 2007-04-05 | 2007-04-05 | 1d |  |  | Mahesh | 8h | 8h |
| 24 | 2.11 | Updated design document |  | 10d | 2007-03-02 | 2007-03-15 | 1 |  |  | 2007-03-02 | 2007-03-15 | 10d | 72d |  | All | 80h |  |
| 25 | 2.12 | End user manual |  | 20d | 2007-03-02 | 2007-03-29 | 1 |  |  | 2007-03-02 | 2007-03-29 | 20d | 62d |  | Sayali | 160h |  |
| 26 | 2.13 | March iteration release | milestone | 0d | 2007-04-09 A | 2007-04-09 A | 23 | 100% |  | 2007-04-05 | 2007-04-05 | 0d |  |  | All |  |  |

Notes:
- 1: Released following functionalities: / 1. Fixed following bugs/enhancements / ·3742 - Support for 'My data list'. / ·Bug#3741 - 'Apply All' functionality. / ·Bug#3789 - Export functionality for data list. / ·Bug#3378 - Removal of dependency on client jars. / ·Bug#3595 - Incoming unidirectional associations should be shown in "related classes" section. / ·Bug#3207 - Appropriate message now displayed if there are no results for metadata search. / ·Bug#3513 - Handling target resolutions / ·Bug#3336 - For queries returning single results, user is directly taken to the 'results details' page. / 2. Following usability issues are also fixed : / ·Background color (set to white) of all screens. / ·UI for the LHS section on home page UI visually improved (support for custom icons, title and collapsible/un-collapsible visual indicator) / 3. Bug# 3606 : Adding data for asscociated objects first to the data list does not get added.
- 3: Initially class names displayed in meta-data search results use to show complete package name alongwith actual name. This has been changed to show applicationname::version::classname.
- 5: 26th March : / Algorithm has to be tested against caBIO. This activity has been post-poned for this iteration. / This task required extra efforts as we found out a bug in path interpretation. Few of the paths were missing using the older path interpretation algorithm. / We changed the approach to interprete a path.
- 6: 20th March : / New algorithm was enhanced to further improve performance, with the result that we are now able to load the following models / caFE / caTissueCore / caArray. / However, while loading caBIO, we are still facing out of memory issues. Work is currently in progress to resolve this issue / ------------------------------------- / 15th March: / In path interpretation algorithm, initially paths were stored in memory and then stored into the database. / With inheritance into picture, amount of paths generated increased drastically and application gave out of memory error. This task is to resolve this issue
- 7: The module is tested (in tems of being able to connect on DAG) for the models we have been able to load
- 12: 20th March / 1. Finished implementation of search based on permissible values. unit testing is currently underway. / ------------------------------------------------------------- / 15th March / 1. Task required lot of restructuring of already existing code / 2. Hrishikesh was on leave for 2 days as he got operated
- 14: 1. Functionality to create experiment from data list added content. This release will always create new experiment from the data list contents
- 15: 20th March / 1.Finalized approach. Design is currently in progress / 15th March / Investigating DE approach took long
- 20: Implementation started. Currently stuck with technical issues

| ID | WBS | Task | Duration | Start | Finish | Predecessors | Complete | Remaining | Baseline start | Baseline finish | Baseline duration | Total slack | Free slack | Resources | Work | Actual work |
| --- | --- | --- | --- | --- | --- | --- | --- | --- | --- | --- | --- | --- | --- | --- | --- | --- |
| 27 | 3 | **Apr Iteration** | 57d | 2007-03-02 A | 2007-05-21 |  | 2% | 55.81d | 2007-03-29 | 2007-05-03 | 26d | 25d |  |  | 1688h | 38h |
| 28 | 3.1 | caArray Support in Query module | 15d | 2007-04-02 A | 2007-04-20 | 18 | 1% | 14.85d |  |  |  | 46d |  | Rahul | 120h | 1.2h |
| 29 | 3.2 | **Open Experiment** | 30d | 2007-03-06 A | 2007-04-16 |  | 2% | 29.33d | 2007-03-06 | 2007-03-28 | 17d | 50d |  |  | 96h | 1.6h |
| 30 | 3.2.1 | Backend support for fetching experiment details | 4d | 2007-04-06 A | 2007-04-11 | 17 | 5% | 3.8d | 2007-03-20 | 2007-03-23 | 4d | 50d | 0d | Chetan | 32h | 1.6h |
| 31 | 3.2.2 | UI for opening an experiment | 2d | 2007-03-06 | 2007-03-07 | 16 |  |  | 2007-03-06 | 2007-03-07 | 2d | 78d |  | Deepak | 16h |  |
| 32 | 3.2.3 | Integrate UI with backend | 3d | 2007-04-12 | 2007-04-16 | 30, 21 |  |  | 2007-03-26 | 2007-03-28 | 3d | 50d |  | Deepak; Chetan | 48h |  |
| 33 | 3.3 | **View experiment data sheet** | 7d | 2007-04-09 | 2007-04-17 |  |  |  | 2007-04-05 | 2007-04-13 | 7d | 36d |  |  | 56h |  |
| 34 | 3.3.1 | UI for showing spreadsheet of selected category dataset | 5d | 2007-04-09 | 2007-04-13 | 22 |  |  | 2007-04-05 | 2007-04-11 | 5d | 36d | 0d | Deepak | 40h |  |
| 35 | 3.3.2 | Hide/Unhide columns in the spreadsheet | 2d | 2007-04-16 | 2007-04-17 | 34 |  |  | 2007-04-12 | 2007-04-13 | 2d | 36d | 0d | Deepak | 16h |  |
| 36 | 3.4 | **Filter Experiment Data set** | 8d | 2007-04-18 | 2007-04-27 |  |  |  | 2007-04-16 | 2007-04-25 | 8d | 36d |  |  | 64h |  |
| 37 | 3.4.1 | UI to filter data set | 5d | 2007-04-18 | 2007-04-24 | 35 |  |  | 2007-04-16 | 2007-04-20 | 5d | 36d | 0d | Deepak | 40h |  |
| 38 | 3.4.2 | Create category for with filtered data-set | 3d | 2007-04-25 | 2007-04-27 | 37 |  |  | 2007-04-23 | 2007-04-25 | 3d | 36d | 11d | Deepak | 24h |  |
| 39 | 3.5 | **Experiment Data Category** | 14d | 2007-04-09 | 2007-04-26 |  |  |  | 2007-03-29 | 2007-04-17 | 14d | 42d |  |  | 112h |  |
| 40 | 3.5.1 | UI for data category hierarchy (Slide 44) | 5d | 2007-04-09 | 2007-04-13 | 22 |  |  | 2007-04-05 | 2007-04-11 | 5d | 42d | 0d | Chetan | 40h |  |
| 41 | 3.5.2 | Backend to get data for selected category | 5d | 2007-04-20 | 2007-04-26 | 54 |  |  | 2007-03-29 | 2007-04-04 | 5d | 42d |  | Srinath | 40h |  |
| 42 | 3.5.3 | Handle onClick event of category | 2d | 2007-04-16 | 2007-04-17 | 40 |  |  | 2007-04-12 | 2007-04-13 | 2d | 42d | 0d | Chetan | 16h |  |
| 43 | 3.5.4 | Search in data category | 2d | 2007-04-18 | 2007-04-19 | 42 |  |  | 2007-04-16 | 2007-04-17 | 2d | 42d | 0d | Chetan | 16h |  |
| 44 | 3.6 | **Visualizations for experiment datasets** | 9d | 2007-04-09 | 2007-04-19 |  |  |  | 2007-04-05 | 2007-04-17 | 9d | 5d |  |  | 72h |  |
| 45 | 3.6.1 | Plotting selected dataset columns as a graph (like Sigma plot) | 5d | 2007-04-09 | 2007-04-13 | 22 |  |  | 2007-04-05 | 2007-04-11 | 5d | 51d |  | Mahesh | 40h |  |
| 46 | 3.6.2 | CDE based literature network viewer | 4d | 2007-04-16 | 2007-04-19 | 60 |  |  | 2007-04-12 | 2007-04-17 | 4d | 0d |  | Chandrakant | 32h |  |
| 47 | 3.7 | **Data services** | 31d | 2007-03-02 A | 2007-04-13 |  | 4% | 29.62d | 2007-03-02 | 2007-03-26 | 17d | 51d |  |  | 440h | 16h |
| 48 | 3.7.1 | Getting caArray data related to caTissue extended model. | 10d | 2007-04-02 | 2007-04-13 | 18 |  |  | 2007-03-13 | 2007-03-26 | 10d | 51d |  | Sreekanth; Pratibha | 160h |  |
| 49 | 3.7.2 | caTissue extended models (with caArray) | 15d | 2007-03-02 | 2007-03-22 | 1 |  |  | 2007-03-02 | 2007-03-22 | 15d | 67d |  | caTissue Team | 120h |  |
| 50 | 3.7.3 | Extended caFE model for caArray (Grid Service) | 10d | 2007-03-02 | 2007-03-15 | 1 |  |  | 2007-03-02 | 2007-03-15 | 10d | 72d |  | café Team | 80h |  |
| 51 | 3.7.4 | GenePattern analysis service investigation and design | 10d | 2007-04-02 A | 2007-04-13 | 12 | 20% | 8d | 2007-03-09 | 2007-03-22 | 10d | 51d |  | Hrishikesh | 80h | 16h |

Notes:
- 28: Working on finalizing approach for storage as well as vizualizaion (on add limit page)for custom attributes.
- 32: 1. "Create new experiment" button not supported for this release
- 34: 1. Formula drop-down not required. / 2. The functionality should be similar to Excel sheet
- 40: 1. "Create custom category" button not supported

| ID | WBS | Task | Type | Duration | Start | Finish | Predecessors | Complete | Remaining | Baseline start | Baseline finish | Baseline duration | Total slack | Free slack | Resources | Work | Actual work |
| --- | --- | --- | --- | --- | --- | --- | --- | --- | --- | --- | --- | --- | --- | --- | --- | --- | --- |
| 52 | 3.8 | **Server issues** |  | 23d | 2007-03-26 A | 2007-04-25 |  | 7% | 21.44d | 2007-03-02 | 2007-03-28 | 19d | 43d |  |  | 264h | 19.2h |
| 53 | 3.8.1 | Category as output backend |  | 16d | 2007-03-26 A | 2007-04-16 | 1, 7 | 9% | 14.6d | 2007-03-02 | 2007-03-12 | 7d | 43d | 0d | Srinath | 128h | 11.2h |
| 54 | 3.8.2 | Category as output backend integration with UI and testing |  | 5d | 2007-04-13 A | 2007-04-19 |  | 10% | 4.5d | 2007-03-22 | 2007-03-28 | 5d | 42d | 0d | Srinath; Mahesh | 80h | 8h |
| 55 | 3.8.3 | View category in results |  | 7d | 2007-04-17 | 2007-04-25 | 53 |  |  | 2007-03-13 | 2007-03-21 | 7d | 43d |  | Mahesh | 56h |  |
| 56 | 3.9 | **Analytical services** |  | 14d | 2007-04-09 | 2007-04-26 |  |  |  | 2007-04-05 | 2007-04-24 | 14d | 0d |  |  | 176h |  |
| 57 | 3.9.1 | Genepattern analytical service support |  | 7d | 2007-04-09 | 2007-04-17 | 22 |  |  | 2007-04-05 | 2007-04-13 | 7d | 44d | 0d | Hrishikesh | 56h |  |
| 58 | 3.9.2 | dynamic UI generation for selected analytical service |  | 5d | 2007-04-18 | 2007-04-24 | 57 |  |  | 2007-04-16 | 2007-04-20 | 5d | 44d |  | Hrishikesh | 40h |  |
| 59 | 3.9.3 | Report tab for analysis to see status of different analysis |  | 5d | 2007-04-20 | 2007-04-26 | 43 |  |  | 2007-04-18 | 2007-04-24 | 5d | 42d |  | Chetan | 40h |  |
| 60 | 3.9.4 | Backend support to search for analytical service instance and execute query on same |  | 5d | 2007-04-09 | 2007-04-13 | 22 |  |  | 2007-04-05 | 2007-04-11 | 5d | 0d |  | Chandrakant | 40h |  |
| 61 | 3.10 | Add caB2B project in Tools webpage of caBIG |  | 3d | 2007-04-10 | 2007-04-12 | 26 |  |  |  |  |  | 52d |  |  |  |  |
| 62 | 3.11 | Testing and bug fixes |  | 5d | 2007-05-15 | 2007-05-21 | 71, 38 |  |  | 2007-04-26 | 2007-05-02 | 5d | 25d |  | All | 40h |  |
| 63 | 3.12 | Preparing installer |  | 7d | 2007-04-20 | 2007-04-30 | 46 |  |  | 2007-04-18 | 2007-04-26 | 7d | 0d |  |  |  |  |
| 64 | 3.13 | Release notes |  | 1d | 2007-05-01 | 2007-05-01 | 63 |  |  | 2007-04-27 | 2007-04-27 | 1d | 0d |  | Mahesh | 8h |  |
| 65 | 3.14 | Updated design document |  | 10d | 2007-04-10 | 2007-04-23 | 26 |  |  | 2007-04-06 | 2007-04-19 | 10d | 45d |  | All | 80h |  |
| 66 | 3.15 | End user manual |  | 20d | 2007-04-10 | 2007-05-07 | 26 |  |  | 2007-04-06 | 2007-05-03 | 20d | 35d |  | Sayali | 160h |  |
| 67 | 3.16 | Beta release | milestone | 0d | 2007-05-01 | 2007-05-01 | 64 |  |  | 2007-04-27 | 2007-04-27 | 0d | 0d |  | All |  |  |
| 68 | 4 | **May Iteration** |  | 39d | 2007-05-02 | 2007-06-25 |  |  |  | 2007-04-30 | 2007-05-29 | 22d | 0d |  |  | 576h |  |
| 69 | 4.1 | **User authentication** |  | 9d | 2007-05-02 | 2007-05-14 | 67 |  |  | 2007-04-05 | 2007-04-17 | 9d | 0d |  |  | 72h |  |
| 70 | 4.1.1 | Login screen |  | 2d | 2007-05-02 | 2007-05-03 | 22 |  |  | 2007-04-05 | 2007-04-06 | 2d | 0d |  | Pratibha | 16h |  |
| 71 | 4.1.2 | Backend support to authenticate user |  | 7d | 2007-05-04 | 2007-05-14 | 70 |  |  | 2007-04-09 | 2007-04-17 | 7d | 0d |  | Pratibha | 56h |  |
| 72 | 4.2 | Set-up wiki site for caB2B |  | 5d | 2007-05-15 | 2007-05-21 | 69 |  |  |  |  |  | 0d |  |  |  |  |
| 73 | 4.3 | Review of user manual document by end users |  | 10d | 2007-05-22 | 2007-06-04 | 72, 67 |  |  |  |  |  | 0d |  |  |  |  |
| 74 | 4.4 | Beta testing by end users |  | 15d | 2007-06-05 | 2007-06-25 | 73 |  |  | 2007-04-30 | 2007-05-18 | 15d | 0d |  | All | 120h |  |
| 75 | 4.5 | Beta release bug fixes |  | 20d | 2007-05-02 | 2007-05-29 | 67 |  |  | 2007-04-30 | 2007-05-25 | 20d | 17d | 0d | All | 160h |  |
| 76 | 4.6 | Installation guide |  | 7d | 2007-05-02 | 2007-05-10 | 67 |  |  | 2007-04-30 | 2007-05-08 | 7d | 32d | 15d | All | 56h |  |
| 77 | 4.7 | User manual |  | 7d | 2007-05-02 | 2007-05-10 | 67 |  |  | 2007-04-30 | 2007-05-08 | 7d | 32d |  | All | 56h |  |
| 78 | 4.8 | Test cases and test execution report |  | 2d | 2007-05-30 | 2007-05-31 | 75 |  |  | 2007-05-28 | 2007-05-29 | 2d | 17d | 0d | All | 16h |  |
| 79 | 4.9 | Final design document |  | 5d | 2007-05-02 | 2007-05-08 | 67 |  |  | 2007-04-30 | 2007-05-04 | 5d | 34d | 17d | All | 40h |  |
| 80 | 4.10 | Final use case document |  | 5d | 2007-05-02 | 2007-05-08 | 67 |  |  | 2007-04-30 | 2007-05-04 | 5d | 34d | 17d | All | 40h |  |
| 81 | 4.11 | Lessons learned document |  | 2d | 2007-05-02 | 2007-05-03 | 67 |  |  | 2007-04-30 | 2007-05-01 | 2d | 37d | 20d | All | 16h |  |
| 82 | 4.12 | Final release | milestone | 0d | 2007-05-31 | 2007-05-31 | 75, 76, 79, 80, 81, 78 |  |  | 2007-05-29 | 2007-05-29 | 0d | 17d |  |  |  |  |

Notes:
- 53: Won't be able to deliver in March release
- 54: Won't be able to deliver in March release
- 55: Won't be able to deliver in March release
- 69: Pull this in April Release
